# Menta 0.3 research

Schedule from GanttProject, 2012-01-16 to 2012-04-09.
Research project to automate the incident handling.

## Calendars

- Project calendar: Mon-Fri working; Sat-Sun off.

## Resources

| Resource | Group |
| --- | --- |
| Max | Architect |
| Alex | Team lead |
| Adel | Developer |
| Bulat | Developer |
| Renat | Developer |
| Artem | Developer |

## Schedule

| ID | WBS | Task | Type | Duration | Start | Finish | Predecessors | Resources |
| --- | --- | --- | --- | --- | --- | --- | --- | --- |
| 1 | 1 | **Analysis** |  | 11d | 2012-01-16 | 2012-01-30 |  |  |
| 2 | 1.1 | Incidents |  | 5d | 2012-01-16 | 2012-01-20 |  | Alex [50%]; Adel [50%]; Renat; Artem; Bulat |
| 3 | 1.2 | Workbook articles |  | 6d | 2012-01-23 | 2012-01-30 | 2 | Alex; Adel; Renat; Artem; Bulat |
| 4 | 2 | **Design Emotion Machine** |  | 38d | 2012-01-23 | 2012-03-14 |  |  |
| 5 | 2.1 | Inbound textual description |  | 1d | 2012-01-23 | 2012-01-23 |  | Alex |
| 6 | 2.2 | Internal knowledge(atom) representations |  | 8d | 2012-01-23 | 2012-02-01 |  | Max |
| 7 | 2.3 | Formalization outbound structures |  | 6d | 2012-02-02 | 2012-02-09 | 6 | Max |
| 8 | 2.4 | Design Solution HowTo-s |  | 16d | 2012-01-24 | 2012-02-14 | 5 | Alex |
| 9 | 2.5 | Design Critics |  | 12d | 2012-02-10 | 2012-02-27 | 7 | Max |
| 10 | 2.6 | Design Selector |  | 12d | 2012-02-15 | 2012-03-01 | 8 | Alex |
| 11 | 2.7 | Design Way2Think |  | 12d | 2012-02-28 | 2012-03-14 | 9 | Max |
| 12 | 3 | Analysis and design | milestone | 0d | 2012-03-15 | 2012-03-15 | 1, 4 | Alex |
| 13 | 4 | **OpenCog prototype** |  | 31d | 2012-01-31 | 2012-03-13 | 1 |  |
| 14 | 4.1 | **CogBuntu** |  | 3d | 2012-01-31 | 2012-02-02 |  |  |
| 15 | 4.1.1 | Red documentation |  | 1d | 2012-01-31 | 2012-01-31 |  | Alex; Adel; Renat; Artem; Bulat |
| 16 | 4.1.2 | Install CogBuntu |  | 2d | 2012-02-01 | 2012-02-02 | 15 | Alex; Adel; Renat; Artem; Bulat |
| 17 | 4.2 | **AtomSpace Analysis** |  | 22d | 2012-02-03 | 2012-03-05 | 14 | Artem |
| 18 | 4.2.1 | Read documentation |  | 2d | 2012-02-03 | 2012-02-06 |  | Artem |
| 19 | 4.2.2 | Test storage using Cookbook |  | 4d | 2012-02-07 | 2012-02-10 | 18 |  |
| 20 | 4.2.3 | Test storage usability for knowledge representation |  | 16d | 2012-02-13 | 2012-03-05 | 19 |  |
| 21 | 4.3 | **Probability Logic Engines analysis** |  | 22d | 2012-02-03 | 2012-03-05 | 14 | Renat |
| 22 | 4.3.1 | **PLN analysis** |  | 6d | 2012-02-03 | 2012-02-10 |  |  |
| 23 | 4.3.1.1 | Read documentation |  | 2d | 2012-02-03 | 2012-02-06 |  |  |
| 24 | 4.3.1.2 | Test PLN using NARS data |  | 4d | 2012-02-07 | 2012-02-10 | 23 |  |
| 25 | 4.3.2 | Bayesian inference |  | 16d | 2012-02-13 | 2012-03-05 | 24 |  |

| ID | WBS | Task | Duration | Start | Finish | Predecessors | Resources |
| --- | --- | --- | --- | --- | --- | --- | --- |
| 26 | 4.4 | **Embodiment** | 28d | 2012-02-03 | 2012-03-13 | 1, 14 | Adel |
| 27 | 4.4.1 | Read documentation | 8d | 2012-02-03 | 2012-02-14 |  |  |
| 28 | 4.4.2 | Test embodiment system to simulate Intellix | 20d | 2012-02-15 | 2012-03-13 | 27 |  |
| 29 | 4.5 | **Natural language processors** | 18d | 2012-02-03 | 2012-02-28 | 14 | Bulat |
| 30 | 4.5.1 | RelEx | 8d | 2012-02-03 | 2012-02-14 |  |  |
| 31 | 4.5.2 | Stanford Parser | 4d | 2012-02-15 | 2012-02-20 | 30 |  |
| 32 | 4.5.3 | OpenNLP | 6d | 2012-02-21 | 2012-02-28 | 31 |  |
| 33 | 5 | **System Training prototype** | 47d | 2012-02-03 | 2012-04-09 | 14 |  |
| 34 | 5.1 | MOSES | 18d | 2012-02-29 | 2012-03-23 | 29 | Bulat |
| 35 | 5.2 | Bayesian network | 16d | 2012-03-06 | 2012-03-27 | 17 | Artem |
| 36 | 5.3 | **Training** | 27d | 2012-02-10 | 2012-03-19 |  |  |
| 37 | 5.3.1 | **Training data structures** | 27d | 2012-02-10 | 2012-03-19 |  |  |
| 38 | 5.3.1.1 | Incident description | 1d | 2012-03-02 | 2012-03-02 | 10 | Alex |
| 39 | 5.3.1.2 | Incident category | 1d | 2012-03-05 | 2012-03-05 | 38 | Alex |
| 40 | 5.3.1.3 | **Incident formalized description** | 10d | 2012-02-10 | 2012-02-23 | 7 | Max |
| 41 | 5.3.1.3.1 | Model | 10d | 2012-02-10 | 2012-02-23 | 4 |  |
| 42 | 5.3.1.4 | Incident solution(Migrate HowTo approach | 10d | 2012-03-06 | 2012-03-19 | 39 | Alex |
| 43 | 5.4 | **Create formalized description generalisation mechanism** | 21d | 2012-02-24 | 2012-03-23 |  |  |
| 44 | 5.4.1 | **Create common parts selector and variable introducer** | 21d | 2012-02-24 | 2012-03-23 |  |  |
| 45 | 5.4.1.1 | Comparator | 6d | 2012-03-06 | 2012-03-13 | 21 | Renat |
| 46 | 5.4.1.2 | Recursive runner | 8d | 2012-03-14 | 2012-03-23 | 45 | Renat |
| 47 | 5.4.1.3 | **Variable introducer** | 20d | 2012-02-24 | 2012-03-22 |  |  |
| 48 | 5.4.1.3.1 | Design variable structure | 4d | 2012-02-24 | 2012-02-29 | 41 | Max |
| 49 | 5.4.1.3.2 | Implement and test variable | 8d | 2012-03-01 | 2012-03-12 | 48 | Max |
| 50 | 5.4.1.3.3 | Named variables builder | 8d | 2012-03-13 | 2012-03-22 | 49 | Max |
| 51 | 5.4.1.3.4 | Unnamed variables builder | 8d | 2012-03-13 | 2012-03-22 | 49 | Artem |

| ID | WBS | Task | Duration | Start | Finish | Predecessors | Resources |
| --- | --- | --- | --- | --- | --- | --- | --- |
| 52 | 5.5 | **Incident classification algorithm** | 12d | 2012-03-23 | 2012-04-09 |  |  |
| 53 | 5.5.1 | **Create test data for KnowledgeBaseAnnotator** | 12d | 2012-03-23 | 2012-04-09 |  |  |
| 54 | 5.5.1.1 | Allowed Software list | 6d | 2012-03-23 | 2012-03-30 | 50 | Max |
| 55 | 5.5.1.2 | Over software actions | 4d | 2012-03-23 | 2012-03-28 | 51 | Artem |
| 56 | 5.5.1.3 | Software attributes | 8d | 2012-03-29 | 2012-04-09 | 55 | Artem |
| 57 | 5.5.1.4 | Software states | 4d | 2012-04-02 | 2012-04-05 | 54 | Max |
| 58 | 5.6 | **Create validation criteria inference approach** | 10d | 2012-02-03 | 2012-02-16 |  |  |
| 59 | 5.6.1 | Analyse validation criteria types | 10d | 2012-02-03 | 2012-02-16 |  |  |
